# 02.MSP.2013

Schedule from MS Project, 2019-12-16 to 2020-03-24, status date 2020-01-07.

## Calendars

- Standard: Mon-Fri 08:00-12:00, 13:00-17:00; Sat-Sun off. Exceptions (off unless hours are given): 2019-12-24 to 2019-12-25 (Christmas), 2020-01-01 (New Year).

## Resources

| Resource | Group |
| --- | --- |
| Janice | BA |
| Rita | BA |
| Ralph | Dev |
| John | Dev |
| Kumar | Dev |
| Oleg | Dev |
| Hui | Dev |
| Lisa | QA |
| Dawn | QA |
| Kim | QA |
| Stakeholders |  |

## Schedule

| ID | WBS | Task | Type | Duration | Start | Finish | Predecessors | Baseline start | Baseline finish | Baseline duration | Total slack | Free slack | Resources | Work | Task Type |
| --- | --- | --- | --- | --- | --- | --- | --- | --- | --- | --- | --- | --- | --- | --- | --- |
| 1 | 1 | **Requirement Analysis** |  | 17d | 2019-12-16 | 2020-01-10 |  | 2019-10-09 | 2019-10-15 | 5d | 0d |  |  | 386h |  |
| 2 | 1.1 | Requirement Document Overview |  | 2d | 2019-12-16 | 2019-12-17 |  | 2019-10-09 | 2019-10-09 | 1d | 0d |  | Janice; Rita | 24h | BA |
| 3 | 1.2 | Identify Exceptions to ISO Document |  | 1d | 2019-12-18 | 2019-12-18 | 2 | 2019-10-10 | 2019-10-10 | 1d | 17.25d |  | Rita | 8h | BA |
| 4 | 1.3 | Analysis of the current manual process of policy creation |  | 1d | 2019-12-18 | 2019-12-18 | 2 |  |  |  | 0d |  | Janice | 8h | BA |
| 5 | 1.4 | Reviewing existing policy admin system |  | 1d | 2019-12-18 | 2019-12-19 | 4 |  |  |  | 0d |  | Janice; Rita | 8h | BA |
| 6 | 1.5 | Interviews With Internal Users |  | 1d | 2019-12-20 | 2019-12-20 | 5 |  |  |  | 0d |  | Janice; Rita | 16h | BA |
| 7 | 1.6 | JAD Meeting 1 - Gather detailed requirements |  | 1d | 2019-12-23 | 2019-12-23 | 6 |  |  |  | 0d |  | Janice; Rita | 16h | BA |
| 8 | 1.7 | JAD Meeting 2 - Create Mockups |  | 1d | 2019-12-26 | 2019-12-26 | 7 |  |  |  | 0d |  | Janice; Rita | 16h | BA |
| 9 | 1.8 | JAD Meeting 3 - Review with Stakeholders |  | 1d | 2019-12-27 | 2019-12-27 | 8 |  |  |  | 0d |  | Janice; Rita | 16h | BA |
| 10 | 1.9 | Create draft requirement document |  | 2d | 2019-12-30 | 2019-12-31 | 9 |  |  |  | 0d |  | Janice; Rita | 32h | BA |
| 11 | 1.10 | Requirement Walk Through Meeting - BA, Dev and QA teams |  | 1d | 2020-01-02 | 2020-01-02 | 10 |  |  |  | 0d |  | Dawn; Hui; Janice; John; Kim; Kumar; Lisa; Oleg; Ralph; Rita | 80h | BA, Dev, QA |
| 12 | 1.11 | Technical gap analysis and document gap findings |  | 2d | 2020-01-03 | 2020-01-06 | 11 |  |  |  | 0d |  | Dawn; Hui; John; Kim; Kumar; Lisa; Oleg; Ralph | 128h | Dev, QA |
| 13 | 1.12 | Address gap findings and Update requirements |  | 1d | 2020-01-07 | 2020-01-07 | 12 |  |  |  | 41.75d | 0d | Janice; Rita | 16h | BA |
| 14 | 1.13 | Final requirement Document |  | 1d | 2020-01-08 | 2020-01-08 | 13 |  |  |  | 41.75d | 0d | Janice; Rita | 16h | BA |
| 15 | 1.14 | Send requirement documents for Approavl and Sign Off |  | 2h | 2020-01-09 | 2020-01-09 | 14 | 2019-10-11 | 2019-10-11 | 1d | 41.75d |  | Janice | 2h | BA |
| 16 | 1.15 | End of Requirement Analysis | milestone | 0d | 2020-01-10 | 2020-01-10 | 19 | 2019-10-15 | 2019-10-15 | 0d | 0d |  |  |  |  |
| 17 | 2 | **Environment Preparation and License purchases** |  | 4d | 2020-01-07 | 2020-01-10 |  |  |  |  | 0d |  |  | 512h |  |
| 18 | 2.1 | Prepare Development environment |  | 4d | 2020-01-07 | 2020-01-10 | 12 | 2019-10-15 | 2019-10-15 | 0d | 40d |  | Dawn; Hui; John; Kim; Kumar; Lisa; Oleg; Ralph | 256h | Dev, QA |
| 19 | 2.2 | Purchase licenses for development and QA |  | 4d | 2020-01-07 | 2020-01-10 | 12 | 2019-10-11 | 2019-10-11 | 1d | 0d |  | Dawn; Hui; John; Kim; Kumar; Lisa; Oleg; Ralph | 256h | Dev, QA |
| 20 | 2.3 | End of Preparation Analysis | milestone | 0d | 2020-01-10 | 2020-01-10 | 19 | 2019-10-15 | 2019-10-15 | 0d | 0d |  |  |  |  |
| 21 | 3 | **Design & Development Phase (Dev & QA)** |  | 15d | 2020-01-13 | 2020-01-31 |  | 2019-10-16 | 2019-11-08 | 17d | 0d |  |  | 800h |  |
| 22 | 3.1 | Database Design & load product data & base rates |  | 5d | 2020-01-13 | 2020-01-17 | 20, 16 | 2019-10-16 | 2019-11-05 | 10d | 0d |  | John | 40h | Dev |
| 23 | 3.2 | Named Insured Page - Development |  | 2d | 2020-01-13 | 2020-01-14 | 20, 16 | 2019-10-16 | 2019-11-06 | 15d | 20d | 0d | Oleg | 16h | Dev |
| 24 | 3.3 | Driver Page - Development |  | 3d | 2020-01-13 | 2020-01-15 | 20, 16 | 2019-11-07 | 2019-11-07 | 1d | 20d | 0d | Hui | 24h | Dev |
| 25 | 3.4 | Vehicle Page - Development |  | 3d | 2020-01-13 | 2020-01-15 | 20, 16 | 2019-11-08 | 2019-11-08 | 0d | 20d | 0d | Kumar | 24h | Dev |
| 26 | 3.5 | Coverage Page - Development |  | 5d | 2020-01-13 | 2020-01-17 | 20, 16 |  |  |  | 20d | 0d | Ralph | 40h | Dev |
| 27 | 3.6 | Premium Page - Development |  | 3d | 2020-01-15 | 2020-01-17 | 23 |  |  |  | 20d | 0d | Oleg | 24h | Dev |
| 28 | 3.7 | Payment Page - Development |  | 3d | 2020-01-16 | 2020-01-20 | 25 |  |  |  | 20d | 0d | Kumar | 24h | Dev |
| 29 | 3.8 | Create Account Page - Development |  | 3d | 2020-01-16 | 2020-01-20 | 24 |  |  |  | 20d | 0d | Hui | 24h | Dev |
| 30 | 3.9 | Named Insured Page - Test Cases |  | 4h | 2020-01-13 | 2020-01-13 | 20, 16 | 2019-10-16 | 2019-11-06 | 15d | 25d | 0d | Lisa | 4h | QA |
| 31 | 3.10 | Driver Page - Test Cases |  | 4h | 2020-01-13 | 2020-01-13 | 30 | 2019-11-08 | 2019-11-08 | 1d | 25d | 0d | Lisa | 4h | QA |
| 32 | 3.11 | Vehicle Page - Test Cases |  | 1d | 2020-01-13 | 2020-01-13 | 20, 16 |  |  |  | 15d | 0d | Dawn | 8h | QA |
| 33 | 3.12 | Coverage Page - Test Cases |  | 1d | 2020-01-13 | 2020-01-13 | 20, 16 |  |  |  | 25d | 0d | Kim | 8h | QA |
| 34 | 3.13 | Premium Page - Test Cases |  | 1d | 2020-01-14 | 2020-01-14 | 31 |  |  |  | 25d | 0d | Lisa | 8h | QA |
| 35 | 3.14 | Payment Page - Test Cases |  | 1d | 2020-01-14 | 2020-01-14 | 32 |  |  |  | 15d | 0d | Dawn | 8h | QA |
| 36 | 3.15 | Create Account Page - Test Cases |  | 1d | 2020-01-14 | 2020-01-14 | 33 |  |  |  | 25d | 0d | Kim | 8h | QA |
| 37 | 3.16 | Regression Test Preparation - Automation Scripting 1 |  | 8d | 2020-01-15 | 2020-01-24 | 34 |  |  |  | 25d | 0d | Dawn | 64h | QA |
| 38 | 3.17 | Regression Test Preparation - Automation Scripting 2 |  | 8d | 2020-01-15 | 2020-01-24 | 36 |  |  |  | 25d | 0d | Kim | 64h | QA |
| 39 | 3.18 | Regression Test Preparation - Automation Scripting 3 |  | 8d | 2020-01-15 | 2020-01-24 | 35 |  |  |  | 15d | 0d | Lisa | 64h | QA |
| 40 | 3.19 | Integration - Rating Engine & Premium Calculation |  | 10d | 2020-01-20 | 2020-01-31 | 27 |  |  |  | 20d | 0d | Oleg | 80h | Dev |
| 41 | 3.20 | Integration - MVR |  | 9d | 2020-01-21 | 2020-01-31 | 29 |  |  |  | 20d | 0d | Hui | 72h | Dev |
| 42 | 3.21 | Integration - Underwriter - Aproval Engine |  | 9d | 2020-01-21 | 2020-01-31 | 28 |  |  |  | 20d | 0d | Kumar | 72h | Dev |
| 43 | 3.22 | Integration - Payment Engine |  | 10d | 2020-01-20 | 2020-01-31 | 26 |  |  |  | 20d | 0d | Ralph | 80h | Dev |
| 44 | 3.23 | Integrating Pages - Screenflow |  | 3d | 2020-01-20 | 2020-01-22 | 22 |  |  |  | 0d |  | John | 24h | Dev |
| 45 | 3.24 | Deployment in QA environment |  | 2d | 2020-01-23 | 2020-01-24 | 44 |  |  |  | 0d |  | John | 16h | Dev |
| 46 | 3.25 | End of Design and Development | milestone | 0d | 2020-01-24 | 2020-01-24 | 45 |  |  |  | 44d |  |  |  |  |

| ID | WBS | Task | Type | Duration | Start | Finish | Predecessors | Total slack | Free slack | Resources | Work | Task Type |
| --- | --- | --- | --- | --- | --- | --- | --- | --- | --- | --- | --- | --- |
| 47 | 4 | **QA & Bug Fixing Phase** |  | 13d | 2020-01-27 | 2020-02-12 |  | 0d |  |  | 552h |  |
| 48 | 4.1 | Named Insured Page - Test Case Execution and Defect Finding |  | 2d | 2020-01-27 | 2020-01-28 | 37, 22 | 25d | 0d | Dawn | 16h | QA |
| 49 | 4.2 | Driver Page - Test Case Execution and Defect Finding |  | 2d | 2020-01-27 | 2020-01-28 | 38, 22 | 25d | 0d | Kim | 16h | QA |
| 50 | 4.3 | Vehicle Page - Test Case Execution and Defect Finding |  | 2d | 2020-01-27 | 2020-01-28 | 39, 22 | 15d | 0d | Lisa | 16h | QA |
| 51 | 4.4 | Coverage Page - Test Case Execution and Defect Finding |  | 3d | 2020-01-29 | 2020-01-31 | 48, 22 | 25d |  | Dawn | 24h | QA |
| 52 | 4.5 | Premium Page - Test Case Execution and Defect Finding |  | 3d | 2020-01-29 | 2020-01-31 | 49, 22 | 25d |  | Kim | 24h | QA |
| 53 | 4.6 | Payment Page - Test Case Execution and Defect Finding |  | 3d | 2020-01-29 | 2020-01-31 | 50, 22 | 15d | 0d | Lisa | 24h | QA |
| 54 | 4.7 | Bug Fixes |  | 10d | 2020-01-27 | 2020-02-07 | 45 | 0d |  | John | 80h | QA |
| 55 | 4.8 | System testing & Defect restesting |  | 5d | 2020-02-03 | 2020-02-07 | 53 | 15d | 0d | Dawn; Kim; Lisa | 120h | QA |
| 56 | 4.9 | Bug Fixes |  | 5d | 2020-02-03 | 2020-02-07 | 40 | 20d |  | Oleg | 40h | Dev |
| 57 | 4.10 | Bug Fixes |  | 5d | 2020-02-03 | 2020-02-07 | 41 | 20d |  | Hui | 40h | Dev |
| 58 | 4.11 | Bug Fixes |  | 5d | 2020-02-03 | 2020-02-07 | 42 | 20d |  | Kumar | 40h | Dev |
| 59 | 4.12 | Bug Fixes |  | 5d | 2020-02-03 | 2020-02-07 | 43 | 20d |  | Ralph | 40h | Dev |
| 60 | 4.13 | Run and update automation tests |  | 3d | 2020-02-10 | 2020-02-12 | 55 | 15d | 0d | Dawn; Kim; Lisa | 72h | QA |
| 61 | 4.14 | End of QA phase | milestone | 0d | 2020-02-12 | 2020-02-12 | 60 | 31d |  |  |  |  |
| 62 | 5 | **UAT Deployment** |  | 25d | 2020-02-10 | 2020-03-13 |  | 0d |  |  | 1448h |  |
| 63 | 5.1 | UAT envrionment deployment |  | 3d | 2020-02-10 | 2020-02-12 | 54 | 0d |  | John; Hui; Kumar; Oleg; Ralph | 120h | Dev |
| 64 | 5.2 | Smoke test in UAT environment |  | 2d | 2020-02-13 | 2020-02-14 | 60 | 29d |  | Dawn; Kim; Lisa | 48h | QA |
| 65 | 5.3 | Fix issues in UAT environment |  | 2d | 2020-02-13 | 2020-02-14 | 63 | 0d |  | John; Hui; Kumar; Oleg; Ralph | 80h | Dev |
| 66 | 5.4 | UAT by SME and stake holders |  | 15d | 2020-02-17 | 2020-03-06 | 65 | 14d |  | Stakeholders | 120h | UAT |
| 67 | 5.5 | Bug Fixes |  | 15d | 2020-02-17 | 2020-03-06 | 65 | 14d |  | John; Hui; Kumar; Oleg; Ralph | 600h | Dev |
| 68 | 5.6 | Defect analysis and retesting |  | 15d | 2020-02-17 | 2020-03-06 | 65 | 0d |  | Dawn; Kim; Lisa | 360h | QA |
| 69 | 5.7 | Run automation tests in UAT environment |  | 5d | 2020-03-09 | 2020-03-13 | 68 | 0d |  | Dawn; Kim; Lisa | 120h | QA |
| 70 | 5.8 | End of UAT phase | milestone | 0d | 2020-03-13 | 2020-03-13 | 69 | 0d |  |  |  |  |

| ID | WBS | Task | Duration | Start | Finish | Predecessors | Total slack | Resources | Work |
| --- | --- | --- | --- | --- | --- | --- | --- | --- | --- |
| 71 | 6 | **Go Live** | 7d | 2020-03-16 | 2020-03-24 |  | 0d |  | 336h |
| 72 | 6.1 | Production Deployment | 5d | 2020-03-16 | 2020-03-20 | 70 | 0d | John; Hui; Kumar; Oleg; Ralph; Dawn; Janice; Kim | 320h |
| 73 | 6.2 | Smoke test in Production environment | 2d | 2020-03-23 | 2020-03-24 | 72 | 0d | Stakeholders | 16h |
